# SOFTENG 306 Project 1 Plan

Schedule from MS Project, 2014-07-21 to 2014-08-29.

## Calendars

- 24 Hours: Mon-Sun 00:00-24:00.

## Schedule

| ID | WBS | Task | Type | Duration | Start | Finish | Predecessors | Total slack | Free slack | Constraint |
| --- | --- | --- | --- | --- | --- | --- | --- | --- | --- | --- |
| 1 | 1 | **Project Plan** |  | 52.12d | 2014-07-21 | 2014-08-07 |  |  |  |  |
| 2 | 1.1 | Requirements Analysis | manual | 2d? | 2014-07-29 | 2014-07-30 |  |  |  |  |
| 3 | 1.2 | Work Breakdown Structure |  | 2d? | 2014-07-30 | 2014-07-31 | 2 | 83.12d | 1d | start no earlier than 2014-07-30 |
| 4 | 1.3 | Network Diagram |  | 2d? | 2014-07-31 | 2014-08-01 | 3 | 82.12d | 1d | start no earlier than 2014-07-31 |
| 5 | 1.4 | GANTT Chart |  | 2d? | 2014-08-01 | 2014-08-02 | 4 | 81.12d | 1d | start no earlier than 2014-08-01 |
| 6 | 1.5 | Milestone Schedule |  | 2d? | 2014-08-02 | 2014-08-03 | 5 | 80.12d |  | start no earlier than 2014-08-02 |
| 7 | 2 | First Demo Deliverables | manual | 24d | 2014-08-07 | 2014-08-15 | 1 |  |  |  |
| 8 | 3 | Final Demo Deliverables | manual | 42d | 2014-08-15 | 2014-08-29 | 7 |  |  |  |
| 9 | 4 | **Weekly Reports** |  | 85.12d | 2014-07-31 | 2014-08-28 |  |  |  |  |
| 10 | 4.1 | Weekly Report 1 | manual | 1d | 2014-07-31 | 2014-07-31 |  |  |  |  |
| 11 | 4.2 | Weekly Report 2 | manual | 1d | 2014-07-31 | 2014-08-01 | 10 |  |  |  |
| 12 | 4.3 | Weekly Report 3 | manual | 1d | 2014-08-01 | 2014-08-01 | 11 |  |  |  |
| 13 | 4.4 | Weekly Report 4 | manual | 1d | 2014-08-01 | 2014-08-01 | 12 |  |  |  |
| 14 | 4.5 | Weekly Report 5 | manual | 1d | 2014-08-01 | 2014-08-02 | 13 |  |  |  |
